# 项目进度计划

Schedule from a web Gantt chart, 2024-05-29 to 2025-07-29.
Every day is a working day

## Schedule

| ID | WBS | Task | Duration | Start | Finish |
| --- | --- | --- | --- | --- | --- |
| 2 | 1 | **签订合同到安装调试 6个月** | 427d | 2024-05-29 | 2025-07-29 |
| 3 | 1.1 | 签合同 | 3d | 2024-05-29 | 2024-05-31 |
| 4 | 1.2 | 设备生产 | 30d | 2024-06-01 | 2024-06-30 |
| 5 | 1.3 | 勘察 | 15d | 2024-06-03 | 2024-06-17 |
| 6 | 1.4 | 施工方案设计 | 21d | 2024-06-18 | 2024-07-08 |
| 7 | 1.5 | 出厂验收 | 3d | 2024-06-28 | 2024-06-30 |
| 8 | 1.6 | 运输 | 10d | 2024-07-01 | 2024-07-10 |
| 9 | 1.7 | **安装调试** | 384d | 2024-07-11 | 2025-07-29 |
| 10 | 1.7.1 | **工程组1** | 1d | 2025-07-29 | 2025-07-29 |
| 11 | 1.7.1.1 | 高频地波雷达安装调试 | 1d | 2025-07-29 | 2025-07-29 |
| 12 | 1.7.1.2 | 自动气象站安装调试 | 1d | 2025-07-29 | 2025-07-29 |
| 13 | 1.7.1.3 | 视频监控安装调试 | 1d | 2025-07-29 | 2025-07-29 |
| 14 | 1.7.1.4 | 北斗终端调试接入 | 1d | 2025-07-29 | 2025-07-29 |
| 15 | 1.7.1.5 | VSAT小站安装调试 | 1d | 2025-07-29 | 2025-07-29 |
| 16 | 1.7.1.6 | KVM调试 | 1d | 2025-07-29 | 2025-07-29 |
| 17 | 1.7.1.7 | 运控装置安装调试 | 1d | 2025-07-29 | 2025-07-29 |
| 18 | 1.7.2 | **工程组2** | 1d | 2024-07-11 | 2024-07-11 |
| 19 | 1.7.2.1 | 高频地波雷达安装调试 | 1d | 2024-07-11 | 2024-07-11 |
| 20 | 1.7.2.2 | 自动气象站安装调试 | 1d | 2024-07-11 | 2024-07-11 |
| 21 | 1.7.2.3 | 视频监控安装调试 | 1d | 2024-07-11 | 2024-07-11 |
| 22 | 1.7.2.4 | 北斗终端调试接入 | 1d | 2024-07-11 | 2024-07-11 |
| 23 | 1.7.2.5 | VSAT小站安装调试 | 1d | 2024-07-11 | 2024-07-11 |
| 24 | 1.7.2.6 | KVM调试 | 1d | 2024-07-11 | 2024-07-11 |
| 25 | 1.7.2.7 | 运控装置安装调试 | 1d | 2024-07-11 | 2024-07-11 |

| ID | WBS | Task | Duration | Start | Finish |
| --- | --- | --- | --- | --- | --- |
| 26 | 1.7.3 | **工程组3** | 1d | 2024-07-11 | 2024-07-11 |
| 27 | 1.7.3.1 | 高频地波雷达安装调试 | 1d | 2024-07-11 | 2024-07-11 |
| 28 | 1.7.3.2 | 自动气象站安装调试 | 1d | 2024-07-11 | 2024-07-11 |
| 29 | 1.7.3.3 | 视频监控安装调试 | 1d | 2024-07-11 | 2024-07-11 |
| 30 | 1.7.3.4 | 北斗终端调试接入 | 1d | 2024-07-11 | 2024-07-11 |
| 31 | 1.7.3.5 | VSAT小站安装调试 | 1d | 2024-07-11 | 2024-07-11 |
| 32 | 1.7.3.6 | 运控装置安装调试 | 1d | 2024-07-11 | 2024-07-11 |
| 33 | 1.7.3.7 | KVM调试 | 1d | 2024-07-11 | 2024-07-11 |
| 34 | 1.7.3.8 | 运控装置安装调试 | 1d | 2024-07-11 | 2024-07-11 |
| 35 | 1.7.4 | 工程组4 | 127d | 2024-07-11 | 2024-11-14 |
| 36 | 1.7.5 | 高频地波雷达安装调试 | 1d | 2024-07-11 | 2024-07-11 |
| 37 | 1.7.6 | 自动气象站安装调试 | 1d | 2024-07-11 | 2024-07-11 |
| 38 | 1.7.7 | 视频监控安装调试 | 1d | 2024-07-11 | 2024-07-11 |
| 39 | 1.7.8 | 北斗终端调试接入 | 1d | 2024-07-11 | 2024-07-11 |
| 40 | 1.7.9 | VSAT小站安装调试 | 1d | 2024-07-11 | 2024-07-11 |
| 41 | 1.7.10 | 运控装置安装调试 | 1d | 2024-07-11 | 2024-07-11 |
| 43 | 1.7.11 | 系统联调 | 14d | 2024-11-15 | 2024-11-28 |
| 44 | 1.8 | 试运行 | 242d | 2024-11-29 | 2025-07-28 |
| 45 | 1.9 | 比测 | 90d | 2024-12-29 | 2025-03-28 |
| 46 | 1.10 | 验收 | 3d | 2025-07-26 | 2025-07-28 |
| 47 | 2 | 试运行到验收结束 8个月 | 243d | 2024-11-29 | 2025-07-29 |
| 48 | 3 | 质保 | 1d | 2025-07-29 | 2025-07-29 |
